Schedule from Planner, 2008-03-21 to 2008-05-26.

## Calendars

- Default: Mon-Fri 08:00-12:00, 13:00-17:00; Sat-Sun off.

## Resources

| Resource |
| --- |
| Jianying |
| Testers |
| Brandon |
| Dave |
| Adam |
| Jad |

## Schedule

| ID | WBS | Task | Type | Duration | Start | Finish | Predecessors | Complete | Constraint | Resources | Work |
| --- | --- | --- | --- | --- | --- | --- | --- | --- | --- | --- | --- |
| 1 | 1 | **Build the OpenFlow Switch on NetFPGA** |  |  | 2008-03-21 | 2008-05-26 |  |  |  |  | 904h |
| 2 | 1.1 | **Build the Hardware** |  |  | 2008-03-21 | 2008-04-28 |  |  |  |  | 296h |
| 3 | 1.1.1 | Write Perl Libs for sim and hw |  |  | 2008-03-21 | 2008-03-25 |  | 100% |  | Jad | 24h |
| 4 | 1.1.2 | Simulate wildcard matching |  |  | 2008-03-26 | 2008-03-27 | 3 | 100% |  | Jad | 16h |
| 5 | 1.1.3 | Add exact matching |  |  | 2008-03-21 | 2008-03-27 |  | 100% |  | Jad | 40h |
| 6 | 1.1.4 | Simulate exact matching |  |  | 2008-03-28 | 2008-04-17 | 5 |  |  | Jad | 120h |
| 7 | 1.1.5 | OpenFlow Hardware runs in Simulation | milestone | 0d | 2008-04-17 | 2008-04-17 | 4, 6 |  |  | Adam; Jad |  |
| 8 | 1.1.6 | OF Synthesis and Meeting Timing |  | 2d | 2008-04-18 | 2008-04-21 | 7 | 80% |  | Adam [50%]; Jad [50%] | 16h |
| 9 | 1.1.7 | Verify hardware |  |  | 2008-04-21 | 2008-04-28 | 8 |  |  | Adam; Jad | 80h |
| 10 | 1.1.8 | OF Hardware with BRAM Done | milestone | 0d | 2008-04-28 | 2008-04-28 | 9 |  |  |  |  |
| 11 | 1.2 | **Build the Software** |  |  | 2008-03-21 | 2008-05-14 |  |  |  |  | 248h |
| 12 | 1.2.1 | Meet Justin to figure tasks and timeline | milestone | 0d | 2008-03-21 | 2008-03-21 |  | 100% |  | Brandon; Dave |  |
| 13 | 1.2.2 | Figure out list of tasks |  |  | 2008-03-21 | 2008-03-21 | 12 | 100% |  | Brandon | 8h |
| 14 | 1.2.3 | **Write the Software** |  |  | 2008-04-03 | 2008-05-14 | 13 |  |  | Dave | 240h |
| 15 | 1.2.3.1 | Interface for linking with OF driver |  |  | 2008-04-03 | 2008-04-09 |  |  | must start on 2008-04-03 | Dave | 40h |
| 16 | 1.2.3.2 | Add locking in the driver |  |  | 2008-04-10 | 2008-04-16 | 15 |  |  | Dave | 40h |
| 17 | 1.2.3.3 | Talking to Hardware |  |  | 2008-04-17 | 2008-04-30 | 16 |  |  | Dave | 80h |
| 18 | 1.2.3.4 | Testing |  |  | 2008-05-01 | 2008-05-14 | 17 |  |  | Dave | 80h |
| 19 | 1.2.4 | OF NetFPGA SW done | milestone | 0d | 2008-05-14 | 2008-05-14 | 14 |  |  |  |  |
| 20 | 1.3 | **Write the tests** |  |  | 2008-03-21 | 2008-04-16 |  |  |  |  | 296h |
| 21 | 1.3.1 | Write tests for reference switch with sample controller |  | 15d | 2008-03-21 | 2008-04-09 |  | 100% |  | Testers [50%]; Brandon [50%] | 120h |
| 22 | 1.3.2 | Write controller in Perl |  |  | 2008-03-21 | 2008-04-03 |  | 50% |  | Brandon | 80h |
| 23 | 1.3.3 | Define Tests for Perl Controller |  |  | 2008-03-21 | 2008-03-24 |  | 95% |  | Brandon | 16h |
| 24 | 1.3.4 | Write tests for Perl Controller |  | 10d | 2008-04-04 | 2008-04-16 | 22, 23 |  |  | Testers [50%]; Brandon [50%] | 80h |

| ID | WBS | Task | Type | Duration | Start | Finish | Predecessors | Complete | Resources | Work |
| --- | --- | --- | --- | --- | --- | --- | --- | --- | --- | --- |
| 25 | 1.4 | **Integrate hardware and software** |  |  | 2008-05-15 | 2008-05-26 | 19, 10 |  |  | 64h |
| 26 | 1.4.1 | Integration |  | 3d | 2008-05-15 | 2008-05-19 |  |  | Dave [50%]; Jad [50%] | 24h |
| 27 | 1.4.2 | Testing |  | 5d | 2008-05-19 | 2008-05-26 | 21, 26 |  | Testers [50%]; Brandon [50%] | 40h |
| 28 | 1.5 | Type 0 OpenFlow Switch Done | milestone | 0d | 2008-05-26 | 2008-05-26 | 25 |  |  |  |
| 29 | 2 | **Implement DRAM Output Queues** |  |  | 2008-03-21 | 2008-05-23 |  |  |  | 600h |
| 30 | 2.1 | Implement parametrizable DRAM interface |  |  | 2008-03-21 | 2008-04-10 |  | 80% | Jianying | 120h |
| 31 | 2.2 | Design the pipeline control signals |  | 15d | 2008-03-21 | 2008-04-09 |  |  | Jianying [33%]; Jad [33%] | 80h |
| 32 | 2.3 | Implement control |  |  | 2008-04-09 | 2008-04-23 | 31 |  | Jad | 80h |
| 33 | 2.4 | Implement datapath |  |  | 2008-04-09 | 2008-04-23 | 31 |  | Jianying | 80h |
| 34 | 2.5 | Simulation |  |  | 2008-04-23 | 2008-05-02 | 30, 33, 32 |  | Jianying; Jad | 120h |
| 35 | 2.6 | Integrate with OF switch |  |  | 2008-05-02 | 2008-05-09 | 34 |  | Jianying | 40h |
| 36 | 2.7 | Meet Timing |  |  | 2008-05-09 | 2008-05-23 | 35 |  | Jianying | 80h |
| 37 | 2.8 | OF Hardware with DRAM done | milestone | 0d | 2008-05-23 | 2008-05-23 | 36 |  |  |  |
